# 试点项目

Schedule from a web Gantt chart, 2025-04-01 to 2025-04-30.
Every day is a working day

## Schedule

| ID | WBS | Task | Duration | Start | Finish |
| --- | --- | --- | --- | --- | --- |
| 2 | 1 | **示范变电站 部署实施工作** | 19d | 2025-04-12 | 2025-04-30 |
| 3 | 1.1 | 预警摄像头安装、人脸识别设备安装 | 5d | 2025-04-16 | 2025-04-20 |
| 4 | 1.2 | 网络贯通联调 | 14d | 2025-04-12 | 2025-04-25 |
| 5 | 1.3 | 智巡接入联调 | 10d | 2025-04-21 | 2025-04-30 |
| 6 | 2 | **智巡系统工作** | 20d | 2025-04-01 | 2025-04-20 |
| 7 | 2.1 | 摄像机接入 | 14d | 2025-04-07 | 2025-04-20 |
| 8 | 2.2 | 站端智巡作业监督功能开发 | 14d | 2025-04-07 | 2025-04-20 |
| 9 | 2.3 | 算法开发 | 20d | 2025-04-01 | 2025-04-20 |
| 10 | 2.4 | 交互接口开发 | 18d | 2025-04-03 | 2025-04-20 |
| 11 | 3 | **智巡集控工作** | 18d | 2025-04-03 | 2025-04-20 |
| 12 | 3.1 | 视频接入 | 6d | 2025-04-10 | 2025-04-15 |
| 13 | 3.2 | 交互接口开发 | 18d | 2025-04-03 | 2025-04-20 |
| 14 | 4 | **智巡系统 现场部署调试** | 1d | 2025-04-21 | 2025-04-21 |
| 15 | 4.1 | 系统部署 | 1d | 2025-04-21 | 2025-04-21 |
